Schedule from MS Project, 2016-08-15 to 2016-11-30, A marks actual dates.
Microsoft

## Calendars

- Padrão: Mon-Fri 08:00-12:00, 13:00-17:00; Sat-Sun off.

## Schedule

| ID | WBS | Task | Type | Duration | Start | Finish | Predecessors | Complete | Remaining | Actual start | Actual finish | Work | Actual work |
| --- | --- | --- | --- | --- | --- | --- | --- | --- | --- | --- | --- | --- | --- |
| 1 | 1 | **Projeto Financiamento coletivos** |  | 78d | 2016-08-15 09:00 | 2016-11-30 18:00 |  | 52% | 37.6d | 2016-08-19 09:00 |  | 68h | 67.4h |
| 2 | 1.1 | **Prospecção** |  | 7.88d | 2016-08-19 18:00 | 2016-08-30 18:00 |  | 100% |  | 2016-08-19 09:00 | 2016-08-29 10:00 | 12h | 12h |
| 3 | 1.1.1 | **PTEC - Proposta Técnica** |  | 3d | 2016-08-19 09:00 A | 2016-08-24 09:00 |  | 100% |  |  | 2016-08-19 10:00 | 5h | 5h |
| 4 | 1.1.1.1 | Elaborar uma Pauta para a reunião e estudar domínio de Aplicação | manual | 0.12d | 2016-08-19 09:00 A | 2016-08-19 10:00 A |  | 100% |  |  |  | 1h | 1h |
| 5 | 1.1.1.2 | Reunir-se com o Cliente | manual | 0.12d | 2016-08-19 09:00 A | 2016-08-19 10:00 A |  | 100% |  |  |  | 1h | 1h |
| 6 | 1.1.1.3 | Redigir PTEC | manual | 0.12d | 2016-08-19 09:00 A | 2016-08-19 10:00 A |  | 100% |  |  |  | 1h | 1h |
| 7 | 1.1.1.4 | Revisar PTEC | manual | 0.12d | 2016-08-19 09:00 A | 2016-08-19 10:00 A |  | 100% |  |  |  | 1h | 1h |
| 8 | 1.1.1.5 | Aprovar PTEC | manual | 0.12d | 2016-08-19 09:00 A | 2016-08-19 10:00 A |  | 100% |  |  |  | 1h | 1h |
| 9 | 1.1.2 | **ETP - Estimativa de Tamanho Preliminar** |  | 3d | 2016-08-25 09:00 A | 2016-08-29 18:00 |  | 100% |  |  | 2016-08-25 10:00 | 4h | 4h |
| 10 | 1.1.2.1 | Elaborar a estimativa do projeto | manual | 0.12d | 2016-08-25 09:00 A | 2016-08-25 10:00 A |  | 100% |  |  |  | 1h | 1h |
| 11 | 1.1.2.2 | Reunir-se com a equipe | manual | 0.12d | 2016-08-25 09:00 A | 2016-08-25 10:00 A |  | 100% |  |  |  | 1h | 1h |
| 12 | 1.1.2.3 | Revisar a estimativa | manual | 0.12d | 2016-08-25 09:00 A | 2016-08-25 10:00 A |  | 100% |  |  |  | 1h | 1h |
| 13 | 1.1.2.4 | Aprovar a estimativa | manual | 0.12d | 2016-08-25 09:00 A | 2016-08-25 10:00 A |  | 100% |  |  |  | 1h | 1h |
| 14 | 1.1.3 | **CRP e ORP - Cronograma e Orçamento Preliminares** |  | 1d | 2016-08-29 09:00 A | 2016-08-30 09:00 |  | 100% |  |  | 2016-08-29 10:00 | 3h | 3h |
| 15 | 1.1.3.1 | 1 | manual | 0.12d | 2016-08-29 09:00 A | 2016-08-29 10:00 A |  | 100% |  |  |  | 1h | 1h |
| 16 | 1.1.3.2 | 2 | manual | 0.12d | 2016-08-29 09:00 A | 2016-08-29 10:00 A |  | 100% |  |  |  | 1h | 1h |
| 17 | 1.1.3.3 | 3 | manual | 0.12d | 2016-08-29 09:00 A | 2016-08-29 10:00 A |  | 100% |  |  |  | 1h | 1h |
| 18 | 1.2 | **Release 01** |  | 39d | 2016-08-31 09:00 A | 2016-10-24 18:00 | 2 | 100% |  |  | 2016-08-31 11:24 | 25h | 25h |
| 19 | 1.2.1 | **Implementação** |  | 39d | 2016-08-31 09:00 A | 2016-10-24 18:00 |  | 100% |  |  | 2016-08-31 11:24 | 25h | 25h |
| 20 | 1.2.1.1 | **Entrega 2 CRUD** |  | 39d | 2016-08-31 09:00 A | 2016-10-24 18:00 |  | 100% |  |  | 2016-08-31 11:24 | 25h | 25h |
| 21 | 1.2.1.1.1 | **CRUD - Usuario** |  | 39d | 2016-08-31 09:00 A | 2016-10-24 18:00 |  | 100% |  |  | 2016-08-31 10:36 | 10h | 10h |
| 22 | 1.2.1.1.1.1 | [RF01]Cadastrar usuario | manual | 0.2d | 2016-08-31 09:00 A | 2016-08-31 10:36 A |  | 100% |  |  |  | 4h | 4h |
| 23 | 1.2.1.1.1.2 | [RF02]Consultar usuario | manual | 0.04d | 2016-08-31 09:00 A | 2016-08-31 09:19 A |  | 100% |  |  |  | 2h | 2h |
| 24 | 1.2.1.1.1.3 | [RF03]Alterar usuario | manual | 0.1d | 2016-08-31 09:00 A | 2016-08-31 09:48 A |  | 100% |  |  |  | 2h | 2h |
| 25 | 1.2.1.1.1.4 | [RF04]Desativar usuario | manual | 0.2d | 2016-08-31 09:00 A | 2016-08-31 10:36 A |  | 100% |  |  |  | 2h | 2h |

| ID | WBS | Task | Type | Duration | Start | Finish | Predecessors | Complete | Actual start | Actual finish | Work | Actual work |
| --- | --- | --- | --- | --- | --- | --- | --- | --- | --- | --- | --- | --- |
| 26 | 1.2.1.1.2 | **CRUD - Projetos** |  | 1d? | 2016-08-31 09:00 A | 2016-09-01 09:00 |  | 100% |  | 2016-08-31 11:24 | 7h | 7h |
| 27 | 1.2.1.1.2.1 | [RF05]Cadastrar Projeto | manual | 0.3d? | 2016-08-31 09:00 A | 2016-08-31 11:24 A |  | 100% |  |  | 3h | 3h |
| 28 | 1.2.1.1.2.2 | [RF06]Consultar projeto | manual | 0.06d? | 2016-08-31 09:00 A | 2016-08-31 09:28 A |  | 100% |  |  | 1h | 1h |
| 29 | 1.2.1.1.2.3 | [RF07]Alterar projeto | manual | 0.2d? | 2016-08-31 09:00 A | 2016-08-31 10:36 A |  | 100% |  |  | 2h | 2h |
| 30 | 1.2.1.1.2.4 | [RF08]Remover projeto | manual | 0.1d? | 2016-08-31 09:00 A | 2016-08-31 09:48 A |  | 100% |  |  | 1h | 1h |
| 31 | 1.2.1.1.3 | **Teste** |  | 0.1d | 2016-08-31 09:00 A | 2016-08-31 09:48 A |  | 100% |  |  | 8h | 8h |
| 32 | 1.2.1.1.3.1 | [RF01]Cadastrar usuario | manual | 0.05d | 2016-08-31 09:00 A | 2016-08-31 09:24 A |  | 100% |  |  | 1h | 1h |
| 33 | 1.2.1.1.3.2 | [RF02]Consultar usuario | manual | 0.02d | 2016-08-31 09:00 A | 2016-08-31 09:09 A |  | 100% |  |  | 1h | 1h |
| 34 | 1.2.1.1.3.3 | [RF03]Alterar usuario | manual | 0.05d | 2016-08-31 09:00 A | 2016-08-31 09:24 A |  | 100% |  |  | 1h | 1h |
| 35 | 1.2.1.1.3.4 | [RF04]Desativar usuario | manual | 0.1d | 2016-08-31 09:00 A | 2016-08-31 09:48 A |  | 100% |  |  | 1h | 1h |
| 36 | 1.2.1.1.3.5 | [RF05]Cadastrar Projeto | manual | 0.1d? | 2016-08-31 09:00 A | 2016-08-31 09:48 A |  | 100% |  |  | 1h | 1h |
| 37 | 1.2.1.1.3.6 | [RF06]Consultar projeto | manual | 0.06d? | 2016-08-31 09:00 A | 2016-08-31 09:28 A |  | 100% |  |  | 1h | 1h |
| 38 | 1.2.1.1.3.7 | [RF07]Alterar projeto | manual | 0.1d? | 2016-08-31 09:00 A | 2016-08-31 09:48 A |  | 100% |  |  | 1h | 1h |
| 39 | 1.2.1.1.3.8 | [RF08]Remover projeto | manual | 0.1d? | 2016-08-31 09:00 A | 2016-08-31 09:48 A |  | 100% |  |  | 1h | 1h |
| 40 | 1.3 | **Release 02** |  | 6d | 2016-10-24 09:00 A | 2016-10-31 18:00 | 18 | 100% |  | 2016-10-31 11:00 | 21h | 21h |
| 41 | 1.3.1 | **Implementação** |  | 6d | 2016-10-24 09:00 A | 2016-10-31 18:00 |  | 100% |  | 2016-10-31 11:00 | 21h | 21h |
| 42 | 1.3.1.1 | **Entrega 2 CRUD** |  | 6d | 2016-10-24 09:00 A | 2016-10-31 18:00 |  | 100% |  | 2016-10-31 11:00 | 14h | 14h |
| 43 | 1.3.1.1.1 | **CRUD - Criterio** |  | 6d | 2016-10-24 09:00 A | 2016-10-31 18:00 |  | 100% |  | 2016-10-24 11:00 | 8h | 8h |
| 44 | 1.3.1.1.1.1 | [RF09]Cadastrar criterio | manual | 0.25d | 2016-10-24 09:00 A | 2016-10-24 11:00 A |  | 100% |  |  | 2h | 2h |
| 45 | 1.3.1.1.1.2 | [RF10]Listar criterio | manual | 0.2d | 2016-10-24 09:00 A | 2016-10-24 10:36 A |  | 100% |  |  | 2h | 2h |
| 46 | 1.3.1.1.1.3 | [RF11]Alterar criterio | manual | 0.25d | 2016-10-24 09:00 A | 2016-10-24 11:00 A |  | 100% |  |  | 2h | 2h |
| 47 | 1.3.1.1.1.4 | [RF12]Desativar criterio | manual | 0.25d | 2016-10-24 09:00 A | 2016-10-24 11:00 A |  | 100% |  |  | 2h | 2h |
| 48 | 1.3.1.1.2 | **CRUD - aprovação** |  | 6d | 2016-10-24 09:00 | 2016-10-31 18:00 |  | 100% | 2016-10-31 09:00 | 2016-10-31 11:00 | 6h | 6h |
| 49 | 1.3.1.1.2.1 | [RF19]Aprovar projeto canditado | manual | 0.2d | 2016-10-31 09:00 A | 2016-10-31 10:36 A |  | 100% |  |  | 2h | 2h |
| 50 | 1.3.1.1.2.2 | [RF20]Consultar projeto aprovado | manual | 0.25d | 2016-10-31 09:00 A | 2016-10-31 11:00 A |  | 100% |  |  | 2h | 2h |
| 51 | 1.3.1.1.2.3 | [RF21]Finalizar projeto aprovado | manual | 0.25d | 2016-10-31 09:00 A | 2016-10-31 11:00 A |  | 100% |  |  | 2h | 2h |

| ID | WBS | Task | Type | Duration | Start | Finish | Predecessors | Complete | Remaining | Actual start | Actual finish | Work | Actual work |
| --- | --- | --- | --- | --- | --- | --- | --- | --- | --- | --- | --- | --- | --- |
| 52 | 1.3.1.2 | **Teste** |  | 6d | 2016-10-24 09:00 A | 2016-10-31 18:00 |  | 100% |  |  | 2016-10-25 09:00 | 7h | 7h |
| 53 | 1.3.1.2.1 | [RF09]Cadastrar criterio | manual | 0.12d | 2016-10-24 09:00 A | 2016-10-24 10:00 A |  | 100% |  |  |  | 1h | 1h |
| 54 | 1.3.1.2.2 | [RF10]Listar criterio | manual | 0.1d | 2016-10-24 09:00 A | 2016-10-24 09:48 A |  | 100% |  |  |  | 1h | 1h |
| 55 | 1.3.1.2.3 | [RF11]Alterar criterio | manual | 0.12d | 2016-10-24 09:00 A | 2016-10-24 10:00 A |  | 100% |  |  |  | 1h | 1h |
| 56 | 1.3.1.2.4 | [RF12]Desativar criterio | manual | 0.12d | 2016-10-24 09:00 A | 2016-10-24 10:00 A |  | 100% |  |  |  | 1h | 1h |
| 57 | 1.3.1.2.5 | [RF19]Aprovar projeto canditado | manual | 0.1d | 2016-10-24 09:00 A | 2016-10-24 09:48 A |  | 100% |  |  |  | 1h | 1h |
| 58 | 1.3.1.2.6 | [RF20]Consultar projeto aprovado | manual | 1d | 2016-10-24 09:00 A | 2016-10-25 09:00 A |  | 100% |  |  |  | 1h | 1h |
| 59 | 1.3.1.2.7 | [RF21]Finalizar projeto aprovado | manual | 1d | 2016-10-24 09:00 A | 2016-10-25 09:00 A |  | 100% |  |  |  | 1h | 1h |
| 60 | 1.4 | **Release 03** |  | 6d | 2016-10-31 09:00 | 2016-11-07 18:00 | 40 | 94% | 0.36d | 2016-10-24 09:00 |  | 10h | 9.4h |
| 61 | 1.4.1 | **Implementação** |  | 6d | 2016-10-31 09:00 | 2016-11-07 18:00 |  | 94% | 0.36d | 2016-10-24 09:00 |  | 10h | 9.4h |
| 62 | 1.4.1.1 | **Entrega 2 CRUD e relatorio** |  | 6d | 2016-10-31 09:00 | 2016-11-07 18:00 |  | 94% | 0.36d | 2016-10-24 09:00 |  | 10h | 9.4h |
| 63 | 1.4.1.1.1 | **CRUD - Financiar** |  | 6d | 2016-10-31 09:00 A | 2016-11-07 18:00 |  | 100% |  |  | 2016-10-31 10:30 | 2.5h | 2.5h |
| 64 | 1.4.1.1.1.1 | [RF28]Financiar projeto | manual | 0.12d | 2016-10-31 09:00 A | 2016-10-31 10:00 A |  | 100% |  |  |  | 1h | 1h |
| 65 | 1.4.1.1.1.2 | [RF29]Consultar financiamento | manual | 0.19d | 2016-10-31 09:00 A | 2016-10-31 10:30 A |  | 100% |  |  |  | 1.5h | 1.5h |
| 66 | 1.4.1.1.2 | **CRUD - Avaliação** |  | 6d | 2016-10-24 09:00 A | 2016-10-31 18:00 |  | 100% |  |  | 2016-10-24 11:00 | 3h | 3h |
| 67 | 1.4.1.1.2.1 | [RF14]Consultar Avaliação do projeto candidato | manual | 0.25d | 2016-10-24 09:00 A | 2016-10-24 11:00 A |  | 100% |  |  |  | 2h | 2h |
| 68 | 1.4.1.1.2.2 | [RF15]Alterar Avaliação do projeto candidato | manual | 0.12d | 2016-10-24 09:00 A | 2016-10-24 10:00 A |  | 100% |  |  |  | 1h | 1h |
| 69 | 1.4.1.1.3 | **Relatorio** |  | 6d | 2016-10-31 09:00 A | 2016-11-07 18:00 |  | 70% | 1.8d |  |  | 2h | 1.4h |
| 70 | 1.4.1.1.3.1 | [RF34]Projetos por categoria | manual | 0.25d | 2016-10-31 09:00 A | 2016-10-31 11:00 |  | 70% | 0.07d |  |  | 2h | 1.4h |
| 71 | 1.4.1.1.4 | **Teste** |  | 0.06d | 2016-10-31 09:00 A | 2016-10-31 09:30 A |  | 100% |  |  |  | 2.5h | 2.5h |
| 72 | 1.4.1.1.4.1 | [RF28]Financiar projeto | manual | 0.06d | 2016-10-31 09:00 A | 2016-10-31 09:30 A |  | 100% |  |  |  | 0.5h | 0.5h |
| 73 | 1.4.1.1.4.2 | [RF29]Consultar financiamento | manual | 0.06d | 2016-10-31 09:00 A | 2016-10-31 09:30 A |  | 100% |  |  |  | 0.5h | 0.5h |
| 74 | 1.4.1.1.4.3 | [RF14]Consultar Avaliação do projeto candidato | manual | 0.06d | 2016-10-31 09:00 A | 2016-10-31 09:30 A |  | 100% |  |  |  | 0.5h | 0.5h |
| 75 | 1.4.1.1.4.4 | [RF15]Alterar Avaliação do projeto candidato | manual | 0.06d | 2016-10-31 09:00 A | 2016-10-31 09:30 A |  | 100% |  |  |  | 0.5h | 0.5h |
| 76 | 1.4.1.1.4.5 | [RF34]Projetos por categoria | manual | 0.06d | 2016-10-31 09:00 A | 2016-10-31 09:30 A |  | 100% |  |  |  | 0.5h | 0.5h |

| ID | WBS | Task | Type | Duration | Start | Finish | Predecessors | Total slack | Constraint |
| --- | --- | --- | --- | --- | --- | --- | --- | --- | --- |
| 77 | 1.5 | **Release 04** |  | 11d | 2016-11-07 09:00 | 2016-11-21 18:00 | 60 |  |  |
| 78 | 1.5.1 | **Implementação** |  | 16d | 2016-10-31 09:00 | 2016-11-21 18:00 |  |  |  |
| 79 | 1.5.1.1 | **Entrega 2 CRUD e relatorio** |  | 11d | 2016-11-07 09:00 | 2016-11-21 18:00 |  |  |  |
| 80 | 1.5.1.1.1 | **CRUD - Recompensa** |  | 11d | 2016-11-07 09:00 | 2016-11-21 18:00 |  |  |  |
| 81 | 1.5.1.1.1.1 | [RF30]Atribuir recompensa | manual | 1d? | 2016-11-07 09:00 | 2016-11-08 09:00 |  |  |  |
| 82 | 1.5.1.1.1.2 | [RF31]Consutar recompensa | manual | 1d? | 2016-11-07 09:00 | 2016-11-08 09:00 |  |  |  |
| 83 | 1.5.1.1.1.3 | [RF32]Altera recompensa | manual | 1d? | 2016-11-07 09:00 | 2016-11-08 09:00 |  |  |  |
| 84 | 1.5.1.1.2 | **Relatorio** |  | 11d | 2016-11-07 09:00 | 2016-11-21 18:00 |  |  |  |
| 85 | 1.5.1.1.2.1 | [RF35]Financeiro de investimentos | manual | 1d? | 2016-11-07 09:00 | 2016-11-08 09:00 |  |  |  |
| 86 | 1.5.1.1.3 | **Teste** |  | 1d | 2016-11-07 09:00 | 2016-11-08 09:00 |  | 0d |  |
| 87 | 1.5.1.1.3.1 | [RF30]Atribuir recompensa | manual | 1d? | 2016-11-07 09:00 | 2016-11-08 09:00 |  |  |  |
| 88 | 1.5.1.1.3.2 | [RF31]Consutar recompensa | manual | 1d? | 2016-11-07 09:00 | 2016-11-08 09:00 |  |  |  |
| 89 | 1.5.1.1.3.3 | [RF32]Altera recompensa | manual | 1d? | 2016-11-07 09:00 | 2016-11-08 09:00 |  |  |  |
| 90 | 1.5.1.1.3.4 | [RF35]Financeiro de investimentos | manual | 1d? | 2016-11-07 09:00 | 2016-11-08 09:00 |  |  |  |
| 91 | 2 | Fechamento |  | 0.88d | 2016-11-22 08:00 | 2016-11-22 16:00 | 77 | 6.12d | finish no earlier than 2009-12-21 18:00 |
